# 项目进度表模板

How a schedule from MS Project changed from version to version. A marks actual dates.

## Version 1 (saved 2014-11-12, file 2-1项目进度表模板-瀑布.mpp)

Note of the change: test

| ID | WBS | Task | Duration | Start | Finish | Predecessors | Complete |
| --- | --- | --- | --- | --- | --- | --- | --- |
| 1 | 1 | **项目总体任务** | 75d? | 2004-05-10 A | 2004-08-20 A |  | 100% |
| 2 | 1.1 | **项目策划** | 46.38d? | 2004-05-10 A | 2004-07-13 A |  | 100% |
| 3 |  | 项目立项 | 1.75d | 2004-05-21 A | 2004-05-24 A |  | 100% |
| 4 |  | 定义需求开发过程 | 0.88d? | 2004-05-10 A | 2004-05-11 A | 3 | 100% |
| 5 |  | 制订需求开发计划 | 1d? | 2004-05-11 A | 2004-05-12 A | 4 | 100% |
| 6 |  | 项目团队建立 | 2.5d? | 2004-05-12 A | 2004-05-14 A | 3 | 100% |
| 7 |  | 项目策划培训 | 1d? | 2004-05-17 A | 2004-05-17 A | 6 | 100% |
| 8 |  | 项目软件生命周期模型选择 | 3d? | 2004-05-18 A | 2004-05-20 A | 7 | 100% |
| 9 |  | 定义项目的软件过程 | 1.33d? | 2004-05-27 A | 2004-05-28 A | 34 | 100% |
| 10 |  | 技术任务WBS拆分 | 1.33d? | 2004-05-28 A | 2004-06-01 A | 9 | 100% |
| 11 |  | 管理任务WBS拆分 | 2d? | 2004-06-01 A | 2004-06-03 A | 10 | 100% |
| 12 |  | 制定估计策略 | 1.75d? | 2004-06-03 A | 2004-06-04 A | 11 | 100% |
| 13 |  | 技术任务规模估计 | 0.75d? | 2004-06-04 A | 2004-06-04 A | 12 | 100% |
| 14 |  | 技术任务工作量估计 | 2.41d? | 2004-06-04 A | 2004-06-08 A | 13 | 100% |
| 15 |  | 关键计算机资源估计 | 1.16d? | 2004-06-08 A | 2004-06-09 A | 14 | 100% |
| 16 |  | 工程设备和支持工具估计 | 1.16d? | 2004-06-09 A | 2004-06-10 A | 15 | 100% |
| 17 |  | 制定风险管理计划 | 1.91d? | 2004-06-10 A | 2004-06-15 A | 16 | 100% |
| 18 |  | 制定同行评审计划 | 1.66d? | 2004-06-15 A | 2004-06-17 A | 17 | 100% |
| 19 |  | 制定培训计划 | 1.29d? | 2004-06-17 A | 2004-06-18 A | 18 | 100% |
| 20 |  | 采购计划 | 1.29d? | 2004-06-18 A | 2004-06-21 A | 19 | 100% |
| 21 |  | 外包计划 | 1.29d? | 2004-06-21 A | 2004-06-22 A | 20 | 100% |
| 22 |  | 明细任务日程安排 | 1.29d? | 2004-06-22 A | 2004-06-23 A | 21 | 100% |
| 23 |  | 制定配置管理计划 | 1.29d? | 2004-06-23 A | 2004-06-24 A | 22 | 100% |
| 24 |  | 制定测试计划 | 1.29d? | 2004-06-24 A | 2004-06-25 A | 23 | 100% |
| 25 |  | 制定质量保证计划 | 1.29d? | 2004-06-25 A | 2004-06-28 A | 24 | 100% |
| 26 |  | 制定项目度量收集计划 | 1.49d? | 2004-06-28 A | 2004-07-08 A | 25 | 100% |
| 27 |  | 制定组间协调计划 | 1.49d? | 2004-07-08 A | 2004-07-09 A | 26 | 100% |
| 28 |  | 计划评审 | 1d? | 2004-07-12 A | 2004-07-12 A | 27 | 100% |
| 29 |  | 计划返工 | 1d? | 2004-07-13 A | 2004-07-13 A | 28 | 100% |
| 30 | 1.2 | **需求阶段任务** | 14d? | 2004-05-10 A | 2004-05-27 A |  | 100% |
| 31 |  | 需求收集活动 | 16h | 2004-05-12 A | 2004-05-13 A | 5 | 100% |
| 32 |  | 需求分析活动 | 6d? | 2004-05-13 A | 2004-05-20 A | 31 | 100% |
| 33 |  | 需求同行评审 | 6d? | 2004-05-20 A | 2004-05-27 A | 32 | 100% |
| 34 |  | 需求问题返工 | 0.83d? | 2004-05-27 A | 2004-05-27 A | 33 | 100% |
| 35 |  | 需求功能矩阵建立 | 1d? | 2004-05-27 A | 2004-05-27 A | 33 | 100% |
| 36 |  | 需求阶段度量数据收集 | 1.12d? | 2004-05-10 A | 2004-05-18 A |  | 100% |
| 37 |  | 需求里程碑报告 | 2d? | 2004-05-21 A | 2004-05-24 A |  | 100% |
| 38 | 1.3 | **设计阶段任务** | 46d? | 2004-05-10 A | 2004-07-12 A |  | 100% |
| 39 |  | 需求培训 | 1d? | 2004-05-10 A | 2004-05-10 A |  | 100% |
| 40 |  | 系统测试用例设计 | 3d? | 2004-05-21 A | 2004-05-25 A | 32 | 100% |
| 41 |  | 系统测试方案编写 | 2d? | 2004-05-21 A | 2004-05-24 A | 32 | 100% |
| 42 |  | 系统测试用例同行评审 | 2d? | 2004-05-25 A | 2004-05-26 A | 40 | 100% |
| 43 |  | 系统测试用例返工 | 2d? | 2004-05-26 A | 2004-05-27 A | 42 | 100% |
| 44 |  | 概要设计1任务 | 2d? | 2004-05-21 A | 2004-05-24 A | 32 | 100% |
| 45 |  | 概要设计2任务 | 5d? | 2004-05-24 A | 2004-05-28 A | 44 | 100% |
| 46 |  | 概要设计同行评审 | 1d? | 2004-05-28 A | 2004-05-28 A | 45 | 100% |
| 47 |  | 概要设计返工 | 2d? | 2004-05-28 A | 2004-05-31 A | 46 | 100% |
| 48 |  | 接口设计 | 2d? | 2004-05-31 A | 2004-06-01 A | 47 | 100% |
| 49 |  | 接口设计评审 | 2d? | 2004-06-01 A | 2004-06-02 A | 48 | 100% |
| 50 |  | 集成测试用例设计 | 3d? | 2004-06-02 A | 2004-06-04 A | 49 | 100% |
| 51 |  | 集成测试用例项目评审 | 1d? | 2004-06-04 A | 2004-06-04 A | 50 | 100% |
| 52 |  | 集成测试用例返工 | 2d? | 2004-06-04 A | 2004-06-07 A | 51 | 100% |
| 53 |  | 详细设计1任务 | 4d? | 2004-06-07 A | 2004-06-10 A | 52 | 100% |
| 54 |  | 详细设计2任务 | 4d? | 2004-06-10 A | 2004-06-15 A | 53 | 100% |
| 55 |  | 详细设计走查 | 1d? | 2004-06-14 A | 2004-06-17 A | 52, 53 | 100% |
| 56 |  | 详细设计返工 | 1d? | 2004-06-18 A | 2004-06-18 A | 55 | 100% |
| 57 |  | 设计阶段需求功能矩阵跟踪 | 1d? | 2004-06-21 A | 2004-06-21 A | 56 | 100% |
| 58 |  | 设计阶段度量数据收集 | 1d? | 2004-07-12 A | 2004-07-12 A | 57 | 100% |
| 59 |  | 用户操作手册编写 | 1.75d? | 2004-05-20 A | 2004-05-21 A | 39 | 100% |
| 60 |  | 用户安装手册编写 | 2d? | 2004-06-04 A | 2004-06-08 A | 47 | 100% |
| 61 |  | 用户维护手册编写 | 2.29d? | 2004-06-21 A | 2004-06-24 A | 56 | 100% |
| 62 |  | 设计里程碑报告 | 6.33d? | 2004-06-21 A | 2004-07-02 A | 56 | 100% |
| 63 | 1.4 | **编码和单元测试任务** | 26d? | 2004-06-11 A | 2004-07-16 A |  | 100% |
| 64 |  | 设计培训 | 1d? | 2004-06-21 A | 2004-06-21 A | 56 | 100% |
| 65 |  | 编码培训 | 2d? | 2004-07-15 A | 2004-07-16 A | 64 | 100% |
| 66 |  | 单元测试用例设计 | 4d? | 2004-06-25 A | 2004-06-30 A | 53, 61 | 100% |
| 67 |  | 单元测试用例非正式评审 | 2d? | 2004-06-30 A | 2004-07-01 A | 66 | 100% |
| 68 |  | 单元测试用例返工 | 2d? | 2004-07-01 A | 2004-07-02 A | 67 | 100% |
| 69 |  | 编码1任务 | 3d? | 2004-06-11 A | 2004-06-15 A | 53 | 100% |
| 70 |  | 编码2任务 | 3d? | 2004-06-15 A | 2004-06-17 A | 69 | 100% |

| ID | WBS | Task | Duration | Start | Finish | Predecessors | Complete | Constraint |
| --- | --- | --- | --- | --- | --- | --- | --- | --- |
| 71 |  | 编码3任务 | 5d? | 2004-06-17 A | 2004-06-23 A | 70 | 100% |  |
| 72 |  | 编码4任务 | 3d? | 2004-06-23 A | 2004-06-25 A | 71 | 100% |  |
| 73 |  | 编码走查 | 2.18d? | 2004-06-21 A | 2004-07-09 A | 70 | 100% |  |
| 74 |  | 单元测试1 | 3d? | 2004-06-15 A | 2004-06-17 A | 69 | 100% |  |
| 75 |  | 单元测试2 | 5d? | 2004-06-18 A | 2004-06-24 A | 74 | 100% |  |
| 76 |  | 集成任务1 | 2d? | 2004-06-24 A | 2004-06-25 A | 75 | 100% |  |
| 77 |  | 集成任务2 | 4d? | 2004-06-25 A | 2004-06-30 A | 76 | 100% |  |
| 78 |  | 用户文档评审 | 2.19d? | 2004-06-30 A | 2004-07-09 A | 77 | 100% |  |
| 79 |  | 用户文档返工 | 1.33d? | 2004-07-09 A | 2004-07-14 A | 78 | 100% |  |
| 80 |  | 单元测试编码返工 | 2d? | 2004-06-24 A | 2004-06-25 A | 74, 75 | 100% |  |
| 81 |  | 需求功能矩阵跟踪 | 2d? | 2004-06-25 A | 2004-06-28 A | 80 | 100% |  |
| 82 |  | 编码阶段度量数据收集 | 2.12d? | 2004-07-07 A | 2004-07-14 A | 81 | 100% |  |
| 83 |  | 编码里程碑报告 | 2d? | 2004-07-14 A | 2004-07-15 A | 82 | 100% |  |
| 84 | 1.5 | **测试阶段任务** | 22d? | 2004-07-15 A | 2004-08-13 A |  | 100% |  |
| 85 |  | 集成测试培训 | 1d? | 2004-07-15 A | 2004-07-15 A | 79 | 100% |  |
| 86 |  | 集成测试任务 | 7d? | 2004-07-16 A | 2004-07-26 A | 85 | 100% |  |
| 87 |  | 集成测试报告编写 | 2d? | 2004-07-26 A | 2004-07-27 A | 86 | 100% |  |
| 88 |  | 集成测试编码返工 | 2d? | 2004-07-26 A | 2004-07-27 A | 86 | 100% |  |
| 89 |  | 系统测试培训 | 2d? | 2004-07-27 A | 2004-07-28 A | 88 | 100% |  |
| 90 |  | 系统测试任务 | 6d? | 2004-07-28 A | 2004-08-04 A | 89 | 100% |  |
| 91 |  | 系统测试报告编写 | 2d? | 2004-08-04 A | 2004-08-05 A | 90 | 100% |  |
| 92 |  | 系统测试编码返工 | 2d? | 2004-08-05 A | 2004-08-06 A | 91 | 100% |  |
| 93 |  | 测试阶段需求功能矩阵跟踪 | 2d? | 2004-08-06 A | 2004-08-09 A | 92 | 100% |  |
| 94 |  | 测试阶段度量数据收集 | 2d? | 2004-08-09 A | 2004-08-10 A | 93 | 100% |  |
| 95 |  | 测试里程碑报告 | 2d? | 2004-08-10 A | 2004-08-11 A | 94 | 100% |  |
| 96 |  | 研发体验 | 2d? | 2004-08-12 A | 2004-08-13 A | 97, 95 | 100% |  |
| 97 |  | 用户体验 | 2d? | 2004-08-11 A | 2004-08-12 A | 95 | 100% |  |
| 98 | 1.6 | **验收阶段任务** | 5d? | 2004-08-16 A | 2004-08-20 A |  | 100% |  |
| 99 |  | 项目试运行 | 1d? | 2004-08-16 A | 2004-08-16 A | 96, 97 | 100% |  |
| 100 |  | 项目总结 | 5d? | 2004-08-16 A | 2004-08-20 A | 99 | 100% |  |
| 101 | 1.7 | **需求变更控制** | 46d | 2004-05-10 A | 2004-07-12 A |  | 100% |  |
| 102 |  | 需求变更控制 1 | 1d | 2004-05-10 A | 2004-05-10 A |  | 100% | start no earlier than 2004-05-10 |
| 103 |  | 需求变更控制 2 | 1d | 2004-06-10 A | 2004-06-10 A |  | 100% | start no earlier than 2004-06-10 |
| 104 |  | 需求变更控制 3 | 1d | 2004-07-12 A | 2004-07-12 A |  | 100% | start no earlier than 2004-07-10 |
| 105 | 1.8 | **项目跟踪与监控活动** | 52d? | 2004-05-13 A | 2004-07-23 A |  | 100% |  |
| 106 | 1.8.1 | **计划变更控制** | 46d | 2004-05-19 A | 2004-07-21 A |  | 100% |  |
| 107 |  | 计划变更控制 1 | 1d | 2004-05-19 A | 2004-05-19 A |  | 100% | start no earlier than 2004-05-19 |
| 108 |  | 计划变更控制 2 | 1d | 2004-06-16 A | 2004-06-16 A |  | 100% | start no earlier than 2004-06-16 |
| 109 |  | 计划变更控制 3 | 1d | 2004-07-21 A | 2004-07-21 A |  | 100% | start no earlier than 2004-07-21 |
| 110 | 1.8.2 | **接口及集成活动跟踪** | 41d | 2004-05-13 A | 2004-07-08 A |  | 100% |  |
| 111 |  | 接口及集成活动跟踪 1 | 1d | 2004-05-13 A | 2004-05-13 A |  | 100% | start no earlier than 2004-05-13 |
| 112 |  | 接口及集成活动跟踪 2 | 1d | 2004-05-20 A | 2004-05-20 A |  | 100% | start no earlier than 2004-05-20 |
| 113 |  | 接口及集成活动跟踪 3 | 1d | 2004-05-27 A | 2004-05-27 A |  | 100% | start no earlier than 2004-05-27 |
| 114 |  | 接口及集成活动跟踪 4 | 1d | 2004-06-03 A | 2004-06-03 A |  | 100% | start no earlier than 2004-06-03 |
| 115 |  | 接口及集成活动跟踪 5 | 1d | 2004-06-10 A | 2004-06-10 A |  | 100% | start no earlier than 2004-06-10 |
| 116 |  | 接口及集成活动跟踪 6 | 1d | 2004-06-17 A | 2004-06-17 A |  | 100% | start no earlier than 2004-06-17 |
| 117 |  | 接口及集成活动跟踪 7 | 1d | 2004-06-24 A | 2004-06-24 A |  | 100% | start no earlier than 2004-06-24 |
| 118 |  | 接口及集成活动跟踪 8 | 1d | 2004-07-01 A | 2004-07-01 A |  | 100% | start no earlier than 2004-07-01 |
| 119 |  | 接口及集成活动跟踪 9 | 1d | 2004-07-08 A | 2004-07-08 A |  | 100% | start no earlier than 2004-07-08 |
| 120 | 1.8.3 | **周例会** | 51d | 2004-05-14 A | 2004-07-23 A |  | 100% |  |
| 121 |  | 周例会 1 | 1d | 2004-05-14 A | 2004-05-14 A |  | 100% | start no earlier than 2004-05-14 |
| 122 |  | 周例会 2 | 1d | 2004-05-21 A | 2004-05-21 A |  | 100% | start no earlier than 2004-05-21 |
| 123 |  | 周例会 3 | 1d | 2004-05-28 A | 2004-05-28 A |  | 100% | start no earlier than 2004-05-28 |
| 124 |  | 周例会 4 | 1d | 2004-06-04 A | 2004-06-04 A |  | 100% | start no earlier than 2004-06-04 |
| 125 |  | 周例会 5 | 1d | 2004-06-11 A | 2004-06-11 A |  | 100% | start no earlier than 2004-06-11 |
| 126 |  | 周例会 6 | 1d | 2004-06-18 A | 2004-06-18 A |  | 100% | start no earlier than 2004-06-18 |
| 127 |  | 周例会 7 | 1d | 2004-06-25 A | 2004-06-25 A |  | 100% | start no earlier than 2004-06-25 |
| 128 |  | 周例会 8 | 1d | 2004-07-02 A | 2004-07-02 A |  | 100% | start no earlier than 2004-07-02 |
| 129 |  | 周例会 9 | 1d | 2004-07-09 A | 2004-07-09 A |  | 100% | start no earlier than 2004-07-09 |
| 130 |  | 周例会 10 | 1d | 2004-07-16 A | 2004-07-16 A |  | 100% | start no earlier than 2004-07-16 |
| 131 |  | 周例会 11 | 1d | 2004-07-23 A | 2004-07-23 A |  | 100% | start no earlier than 2004-07-23 |
| 132 | 1.8.4 | **项目周报编写** | 51d | 2004-05-14 A | 2004-07-23 A |  | 100% |  |
| 133 |  | 项目周报编写 1 | 1d | 2004-05-14 A | 2004-05-14 A |  | 100% | start no earlier than 2004-05-14 |
| 134 |  | 项目周报编写 2 | 1d | 2004-05-21 A | 2004-05-21 A |  | 100% | start no earlier than 2004-05-21 |
| 135 |  | 项目周报编写 3 | 1d | 2004-05-28 A | 2004-05-28 A |  | 100% | start no earlier than 2004-05-28 |
| 136 |  | 项目周报编写 4 | 1d | 2004-06-04 A | 2004-06-04 A |  | 100% | start no earlier than 2004-06-04 |
| 137 |  | 项目周报编写 5 | 1d | 2004-06-11 A | 2004-06-11 A |  | 100% | start no earlier than 2004-06-11 |
| 138 |  | 项目周报编写 6 | 1d | 2004-06-18 A | 2004-06-18 A |  | 100% | start no earlier than 2004-06-18 |
| 139 |  | 项目周报编写 7 | 1d | 2004-06-25 A | 2004-06-25 A |  | 100% | start no earlier than 2004-06-25 |
| 140 |  | 项目周报编写 8 | 1d | 2004-07-02 A | 2004-07-02 A |  | 100% | start no earlier than 2004-07-02 |

| ID | WBS | Task | Duration | Start | Finish | Predecessors | Complete | Constraint |
| --- | --- | --- | --- | --- | --- | --- | --- | --- |
| 141 |  | 项目周报编写 9 | 1d | 2004-07-09 A | 2004-07-09 A |  | 100% | start no earlier than 2004-07-09 |
| 142 |  | 项目周报编写 10 | 1d | 2004-07-16 A | 2004-07-16 A |  | 100% | start no earlier than 2004-07-16 |
| 143 |  | 项目周报编写 11 | 1d | 2004-07-23 A | 2004-07-23 A |  | 100% | start no earlier than 2004-07-23 |
| 144 | 1.8.5 | **项目问题和风险管理** | 51d | 2004-05-14 A | 2004-07-23 A |  | 100% |  |
| 145 |  | 项目问题和风险管理 1 | 1d | 2004-05-14 A | 2004-05-14 A |  | 100% | start no earlier than 2004-05-14 |
| 146 |  | 项目问题和风险管理 2 | 1d | 2004-05-21 A | 2004-05-21 A |  | 100% | start no earlier than 2004-05-21 |
| 147 |  | 项目问题和风险管理 3 | 1d | 2004-05-28 A | 2004-05-28 A |  | 100% | start no earlier than 2004-05-28 |
| 148 |  | 项目问题和风险管理 4 | 1d | 2004-06-04 A | 2004-06-04 A |  | 100% | start no earlier than 2004-06-04 |
| 149 |  | 项目问题和风险管理 5 | 1d | 2004-06-11 A | 2004-06-11 A |  | 100% | start no earlier than 2004-06-11 |
| 150 |  | 项目问题和风险管理 6 | 1d | 2004-06-18 A | 2004-06-18 A |  | 100% | start no earlier than 2004-06-18 |
| 151 |  | 项目问题和风险管理 7 | 1d | 2004-06-25 A | 2004-06-25 A |  | 100% | start no earlier than 2004-06-25 |
| 152 |  | 项目问题和风险管理 8 | 1d | 2004-07-02 A | 2004-07-02 A |  | 100% | start no earlier than 2004-07-02 |
| 153 |  | 项目问题和风险管理 9 | 1d | 2004-07-09 A | 2004-07-09 A |  | 100% | start no earlier than 2004-07-09 |
| 154 |  | 项目问题和风险管理 10 | 1d | 2004-07-16 A | 2004-07-16 A |  | 100% | start no earlier than 2004-07-16 |
| 155 |  | 项目问题和风险管理 11 | 1d | 2004-07-23 A | 2004-07-23 A |  | 100% | start no earlier than 2004-07-23 |
| 156 |  | 组间协调 | 1.47d? | 2004-07-05 A | 2004-07-15 A | 62 | 100% |  |
| 157 | 1.9 | **质量保证任务** | 73d? | 2004-05-10 A | 2004-08-18 A |  | 100% |  |
| 158 |  | 质量保证活动培训 | 1d? | 2004-05-11 A | 2004-05-11 A | 39 | 100% |  |
| 159 | 1.9.2 | **QA过程评审** | 72d? | 2004-05-10 A | 2004-08-17 A |  | 100% |  |
| 160 |  | 需求管理过程评审 | 1d? | 2004-05-10 A | 2004-05-10 A |  | 100% |  |
| 161 |  | 项目策划过程评审 | 1d? | 2004-05-10 A | 2004-05-10 A |  | 100% |  |
| 162 |  | 项目跟踪与监控过程评审 | 1d? | 2004-05-10 A | 2004-05-10 A |  | 100% |  |
| 163 |  | 项目配置管理过程评审 | 1d? | 2004-05-10 A | 2004-05-10 A | 162 | 100% |  |
| 164 |  | 项目培训过程评审 | 1d? | 2004-05-10 A | 2004-05-10 A | 163 | 100% |  |
| 165 |  | 项目软件产品工程评审 | 1d? | 2004-05-10 A | 2004-05-10 A | 164 | 100% |  |
| 166 |  | 同行评审过程评审 | 1d? | 2004-05-11 A | 2004-05-11 A | 165 | 100% |  |
| 167 |  | 组间协调过程评审 | 1d? | 2004-05-11 A | 2004-05-11 A | 166 | 100% |  |
| 168 |  | 外部专家对SQA的评审 | 1d? | 2004-08-17 A | 2004-08-17 A | 99 | 100% |  |
| 169 |  | QA过程问题跟踪 | 2d? | 2004-08-17 A | 2004-08-18 A | 159 | 100% |  |
| 170 | 1.9.4 | **QA产品审计** | 1d? | 2004-05-10 A | 2004-05-10 A |  | 100% |  |
| 171 |  | 软件需求规格说明书产品审计 | 1d? | 2004-05-10 A | 2004-05-10 A |  | 100% |  |
| 172 |  | 概要设计说明书产品审计 | 1d? | 2004-05-10 A | 2004-05-10 A |  | 100% |  |
| 173 |  | 用户文档产品审计 | 1d? | 2004-05-10 A | 2004-05-10 A |  | 100% |  |
| 174 |  | QA产品审计问题跟踪 | 2d? | 2004-05-10 A | 2004-05-11 A | 170 | 100% |  |
| 175 | 1.9.6 | **QA项目支持任务** | 51d | 2004-05-12 A | 2004-07-21 A |  | 100% |  |
| 176 |  | QA项目支持任务 1 | 1d | 2004-05-12 A | 2004-05-12 A |  | 100% | start no earlier than 2004-05-12 |
| 177 |  | QA项目支持任务 2 | 1d | 2004-05-19 A | 2004-05-19 A |  | 100% | start no earlier than 2004-05-19 |
| 178 |  | QA项目支持任务 3 | 1d | 2004-05-26 A | 2004-05-26 A |  | 100% | start no earlier than 2004-05-26 |
| 179 |  | QA项目支持任务 4 | 1d | 2004-06-02 A | 2004-06-02 A |  | 100% | start no earlier than 2004-06-02 |
| 180 |  | QA项目支持任务 5 | 1d | 2004-06-09 A | 2004-06-09 A |  | 100% | start no earlier than 2004-06-09 |
| 181 |  | QA项目支持任务 6 | 1d | 2004-06-16 A | 2004-06-16 A |  | 100% | start no earlier than 2004-06-16 |
| 182 |  | QA项目支持任务 7 | 1d | 2004-06-23 A | 2004-06-23 A |  | 100% | start no earlier than 2004-06-23 |
| 183 |  | QA项目支持任务 8 | 1d | 2004-06-30 A | 2004-06-30 A |  | 100% | start no earlier than 2004-06-30 |
| 184 |  | QA项目支持任务 9 | 1d | 2004-07-07 A | 2004-07-07 A |  | 100% | start no earlier than 2004-07-07 |
| 185 |  | QA项目支持任务 10 | 1d | 2004-07-14 A | 2004-07-14 A |  | 100% | start no earlier than 2004-07-14 |
| 186 |  | QA项目支持任务 11 | 1d | 2004-07-21 A | 2004-07-21 A |  | 100% | start no earlier than 2004-07-21 |
| 187 | 1.10 | **配置管理任务** | 69d? | 2004-05-10 A | 2004-08-12 A |  | 100% |  |
| 188 |  | 配置管理活动培训 | 1d? | 2004-05-12 A | 2004-05-12 A | 158 | 100% |  |
| 189 |  | 配置库建立 | 1d? | 2004-05-10 A | 2004-05-10 A |  | 100% |  |
| 190 | 1.10.3 | **配置项状态记录和发布** | 46d | 2004-05-13 A | 2004-07-15 A |  | 100% |  |
| 191 |  | 配置项状态记录和发布 1 | 1d | 2004-05-13 A | 2004-05-13 A |  | 100% | start no earlier than 2004-05-13 |
| 192 |  | 配置项状态记录和发布 2 | 1d | 2004-05-20 A | 2004-05-20 A |  | 100% | start no earlier than 2004-05-20 |
| 193 |  | 配置项状态记录和发布 3 | 1d | 2004-05-27 A | 2004-05-27 A |  | 100% | start no earlier than 2004-05-27 |
| 194 |  | 配置项状态记录和发布 4 | 1d | 2004-06-03 A | 2004-06-03 A |  | 100% | start no earlier than 2004-06-03 |
| 195 |  | 配置项状态记录和发布 5 | 1d | 2004-06-10 A | 2004-06-10 A |  | 100% | start no earlier than 2004-06-10 |
| 196 |  | 配置项状态记录和发布 6 | 1d | 2004-06-17 A | 2004-06-17 A |  | 100% | start no earlier than 2004-06-17 |
| 197 |  | 配置项状态记录和发布 7 | 1d | 2004-06-24 A | 2004-06-24 A |  | 100% | start no earlier than 2004-06-24 |
| 198 |  | 配置项状态记录和发布 8 | 1d | 2004-07-01 A | 2004-07-01 A |  | 100% | start no earlier than 2004-07-01 |
| 199 |  | 配置项状态记录和发布 9 | 1d | 2004-07-08 A | 2004-07-08 A |  | 100% | start no earlier than 2004-07-08 |
| 200 |  | 配置项状态记录和发布 10 | 1d | 2004-07-15 A | 2004-07-15 A |  | 100% | start no earlier than 2004-07-15 |
| 201 |  | 配置物理审计 | 1d? | 2004-06-18 A | 2004-06-18 A | 70 | 100% |  |
| 202 |  | 配置功能审计 | 1d? | 2004-06-18 A | 2004-06-18 A | 70 | 100% |  |
| 203 |  | 配置审计问题跟踪 | 1.04d? | 2004-06-24 A | 2004-07-07 A | 201, 202 | 100% |  |
| 204 | 1.10.7 | **配置变更控制** | 51d | 2004-05-13 A | 2004-07-22 A |  | 100% |  |
| 205 |  | 配置变更控制 1 | 1d | 2004-05-13 A | 2004-05-13 A |  | 100% | start no earlier than 2004-05-13 |
| 206 |  | 配置变更控制 2 | 1d | 2004-05-20 A | 2004-05-20 A |  | 100% | start no earlier than 2004-05-20 |
| 207 |  | 配置变更控制 3 | 1d | 2004-05-27 A | 2004-05-27 A |  | 100% | start no earlier than 2004-05-27 |
| 208 |  | 配置变更控制 4 | 1d | 2004-06-03 A | 2004-06-03 A |  | 100% | start no earlier than 2004-06-03 |
| 209 |  | 配置变更控制 5 | 1d | 2004-06-10 A | 2004-06-10 A |  | 100% | start no earlier than 2004-06-10 |
| 210 |  | 配置变更控制 6 | 1d | 2004-06-17 A | 2004-06-17 A |  | 100% | start no earlier than 2004-06-17 |

| ID | WBS | Task | Duration | Start | Finish | Predecessors | Complete | Constraint |
| --- | --- | --- | --- | --- | --- | --- | --- | --- |
| 211 |  | 配置变更控制 7 | 1d | 2004-06-24 A | 2004-06-24 A |  | 100% | start no earlier than 2004-06-24 |
| 212 |  | 配置变更控制 8 | 1d | 2004-07-01 A | 2004-07-01 A |  | 100% | start no earlier than 2004-07-01 |
| 213 |  | 配置变更控制 9 | 1d | 2004-07-08 A | 2004-07-08 A |  | 100% | start no earlier than 2004-07-08 |
| 214 |  | 配置变更控制 10 | 1d | 2004-07-15 A | 2004-07-15 A |  | 100% | start no earlier than 2004-07-15 |
| 215 |  | 配置变更控制 11 | 1d | 2004-07-22 A | 2004-07-22 A |  | 100% | start no earlier than 2004-07-22 |
| 216 |  | 产品构造及发布1 | 2d? | 2004-06-28 A | 2004-06-29 A | 80 | 100% |  |
| 217 |  | 产品构造及发布2 | 2d? | 2004-07-28 A | 2004-07-29 A | 88 | 100% |  |
| 218 |  | 产品构造及发布3 | 4d? | 2004-08-09 A | 2004-08-12 A | 92 | 100% |  |
| 219 | 1.10.11 | **配置库备份** | 51d | 2004-05-14 A | 2004-07-23 A |  | 100% |  |
| 220 |  | 配置库备份 1 | 1d | 2004-05-14 A | 2004-05-14 A |  | 100% | start no earlier than 2004-05-14 |
| 221 |  | 配置库备份 2 | 1d | 2004-05-21 A | 2004-05-21 A |  | 100% | start no earlier than 2004-05-21 |
| 222 |  | 配置库备份 3 | 1d | 2004-05-28 A | 2004-05-28 A |  | 100% | start no earlier than 2004-05-28 |
| 223 |  | 配置库备份 4 | 1d | 2004-06-04 A | 2004-06-04 A |  | 100% | start no earlier than 2004-06-04 |
| 224 |  | 配置库备份 5 | 1d | 2004-06-11 A | 2004-06-11 A |  | 100% | start no earlier than 2004-06-11 |
| 225 |  | 配置库备份 6 | 1d | 2004-06-18 A | 2004-06-18 A |  | 100% | start no earlier than 2004-06-18 |
| 226 |  | 配置库备份 7 | 1d | 2004-06-25 A | 2004-06-25 A |  | 100% | start no earlier than 2004-06-25 |
| 227 |  | 配置库备份 8 | 1d | 2004-07-02 A | 2004-07-02 A |  | 100% | start no earlier than 2004-07-02 |
| 228 |  | 配置库备份 9 | 1d | 2004-07-09 A | 2004-07-09 A |  | 100% | start no earlier than 2004-07-09 |
| 229 |  | 配置库备份 10 | 1d | 2004-07-16 A | 2004-07-16 A |  | 100% | start no earlier than 2004-07-16 |
| 230 |  | 配置库备份 11 | 1d | 2004-07-23 A | 2004-07-23 A |  | 100% | start no earlier than 2004-07-23 |

## Version 2 (saved 2014-11-12, file 2-2项目进度表模板-迭代.mpp)

Note of the change: test

Last finish 2004-08-20 → 2004-08-13 (-7d). Complete tasks 208 → 3.

Changed:

| ID | Task | Start | Finish | Duration | Complete | Total float | Predecessors |
| --- | --- | --- | --- | --- | --- | --- | --- |
| 1 | **项目总体任务** |  | 2004-08-20 A → 2004-08-13 (-7d) | 75d? → 69.96d? | 100% → 1% | none → 0d |  |
| 2 | **项目策划** |  | 2004-07-13 A → 2004-07-15 (+2d) | 46.38d? → 48.04d? | 100% → 15% | none → 21.29d |  |
| 3 | 项目立项 | 2004-05-21 A → 2004-05-21 | 2004-05-24 A → 2004-05-24 | 1.75d → 0.5d | 100% → 0% | none → -10.12d |  |
| 7 | 项目策划培训 | 2004-05-17 A → 2004-05-17 | 2004-05-17 A → 2004-05-17 |  | 100% → 0% | none → 60.96d |  |
| 8 | 项目软件生命周期模型选择 | 2004-05-18 A → 2004-05-18 | 2004-05-20 A → 2004-05-20 | 3d? → 1.5d? | 100% → 0% | none → 61.46d |  |
| 9 | 定义项目的软件过程 | 2004-05-27 A → 2004-05-27 | 2004-05-28 A → 2004-05-28 | 1.33d? → 1d? | 100% → 0% | none → 22.29d |  |
| 10 | 技术任务WBS拆分 | 2004-05-28 A → 2004-05-28 | 2004-06-01 A → 2004-06-01 | 1.33d? → 1d? | 100% → 0% | none → 22.29d |  |
| 11 | 管理任务WBS拆分 | 2004-06-01 A → 2004-06-01 | 2004-06-03 A → 2004-06-03 | 2d? → 1d? | 100% → 0% | none → 22.29d |  |
| 12 | 制定估计策略 | 2004-06-03 A → 2004-06-03 | 2004-06-04 A → 2004-06-04 | 1.75d? → 1d? | 100% → 0% | none → 22.29d |  |
| 13 | 技术任务规模估计 | 2004-06-04 A → 2004-06-04 | 2004-06-04 A → 2004-06-04 | 0.75d? → 0.33d? | 100% → 0% | none → 22.29d |  |
| 14 | 技术任务工作量估计 | 2004-06-04 A → 2004-06-04 | 2004-06-08 A → 2004-06-08 | 2.41d? → 1.59d? | 100% → 0% | none → 22.29d |  |
| 15 | 关键计算机资源估计 | 2004-06-08 A → 2004-06-08 | 2004-06-09 A → 2004-06-09 | 1.16d? → 1d? | 100% → 0% | none → 22.29d |  |
| 16 | 工程设备和支持工具估计 | 2004-06-09 A → 2004-06-09 | 2004-06-10 A → 2004-06-10 | 1.16d? → 1d? | 100% → 0% | none → 22.29d |  |
| 17 | 制定风险管理计划 | 2004-06-10 A → 2004-06-10 | 2004-06-15 A → 2004-06-15 | 1.91d? → 1d? | 100% → 0% | none → 22.29d |  |
| 18 | 制定同行评审计划 | 2004-06-15 A → 2004-06-15 | 2004-06-17 A → 2004-06-17 | 1.66d? → 1d? | 100% → 0% | none → 22.29d |  |
| 19 | 采购计划 | 2004-06-18 A → 2004-06-17 (-1d) | 2004-06-21 A → 2004-06-18 (-3d) | 1.29d? → 1d? | 100% → 0% | none → 20.29d | 21 → 18 |
| 20 | 外包计划 | 2004-06-21 A → 2004-06-18 (-3d) | 2004-06-22 A → 2004-06-21 (-1d) | 1.29d? → 1d? | 100% → 0% | none → 20.29d |  |
| 21 | 制定培训计划 | 2004-06-17 A → 2004-06-21 (+4d) | 2004-06-18 A → 2004-06-22 (+4d) | 1.29d? → 1d? | 100% → 0% | none → 20.29d | 18 → 20 |
| 22 | 明细任务日程安排 | 2004-06-22 A → 2004-06-22 | 2004-06-23 A → 2004-06-24 (+1d) | 1.29d? → 1d? | 100% → 0% | none → 20.29d | 20 → 21 |
| 23 | 制定配置管理计划 | 2004-06-23 A → 2004-06-24 (+1d) | 2004-06-24 A → 2004-06-25 (+1d) | 1.29d? → 1d? | 100% → 0% | none → 20.29d |  |
| 24 | 制定测试计划 | 2004-06-24 A → 2004-06-25 (+1d) | 2004-06-25 A → 2004-06-28 (+3d) | 1.29d? → 1d? | 100% → 0% | none → 20.29d |  |
| 25 | 制定质量保证计划 | 2004-06-25 A → 2004-06-28 (+3d) | 2004-06-28 A → 2004-06-29 (+1d) | 1.29d? → 1d? | 100% → 0% | none → 20.29d |  |
| 26 | 制定项目度量收集计划 | 2004-06-28 A → 2004-06-29 (+1d) | 2004-07-08 A → 2004-07-09 (+1d) | 1.49d? → 1d? | 100% → 0% | none → 20.29d |  |
| 27 | 制定组间协调计划 | 2004-07-08 A → 2004-07-09 (+1d) | 2004-07-09 A → 2004-07-12 (+3d) | 1.49d? → 1d? | 100% → 0% | none → 20.29d |  |
| 28 | 计划评审 | 2004-07-12 A → 2004-07-13 (+1d) | 2004-07-12 A → 2004-07-14 (+2d) |  | 100% → 0% | none → 20.29d |  |
| 29 | 计划返工 | 2004-07-13 A → 2004-07-14 (+1d) | 2004-07-13 A → 2004-07-15 (+2d) |  | 100% → 0% | none → 21.29d |  |
| 30 | **需求阶段任务** | 2004-05-10 A → 2004-05-10 | 2004-05-27 A → 2004-05-27 | 14d? → 13.88d? | 100% → 0% | none → -30.68d |  |
| 31 | 需求收集活动 | 2004-05-12 A → 2004-05-12 | 2004-05-13 A → 2004-05-13 | 16h → 10h | 100% → 0% | none → -33.05d |  |
| 32 | 需求分析活动 | 2004-05-13 A → 2004-05-13 | 2004-05-20 A → 2004-05-20 | 6d? → 5d? | 100% → 0% | none → -33.05d |  |
| 33 | 需求同行评审 | 2004-05-20 A → 2004-05-20 | 2004-05-27 A → 2004-05-27 | 6d? → 4.38d? | 100% → 0% | none → 10.84d |  |
| 34 | 需求问题返工 | 2004-05-27 A → 2004-05-27 | 2004-05-27 A → 2004-05-27 | 0.83d? → 0.38d? | 100% → 0% | none → 20.29d |  |
| 35 | 需求功能矩阵建立 | 2004-05-27 A → 2004-05-27 | 2004-05-27 A → 2004-05-27 | 1d? → 0.88d? | 100% → 0% | none → 55.96d |  |
| 36 | 需求阶段度量数据收集 | 2004-05-10 A → 2004-05-10 | 2004-05-18 A → 2004-05-18 | 1.12d? → 1d? | 100% → 0% | none → 62.96d |  |
| 37 | 需求里程碑报告 | 2004-05-21 A → 2004-05-21 | 2004-05-24 A → 2004-05-24 | 2d? → 1d? | 100% → 0% | none → 59.71d |  |
| 38 | **设计阶段任务** | 2004-05-10 A → 2004-05-10 | 2004-07-12 A → 2004-07-12 |  | 100% → 0% | none → -24.3d |  |
| 39 | 需求培训 | 2004-05-10 A → 2004-05-10 | 2004-05-10 A → 2004-05-10 |  | 100% → 0% | none → 60.21d |  |
| 40 | 系统测试用例设计 | 2004-05-21 A → 2004-05-20 (-1d) | 2004-05-25 A → 2004-05-25 | 3d? → 2.5d? | 100% → 0% | none → 55.71d |  |
| 41 | 系统测试方案编写 | 2004-05-21 A → 2004-05-20 (-1d) | 2004-05-24 A → 2004-05-21 (-3d) | 2d? → 1.25d? | 100% → 0% | none → 59.96d |  |
| 42 | 系统测试用例同行评审 | 2004-05-25 A → 2004-05-25 | 2004-05-26 A → 2004-05-26 | 2d? → 1d? | 100% → 0% | none → 55.71d |  |
| 43 | 系统测试用例返工 | 2004-05-26 A → 2004-05-26 | 2004-05-27 A → 2004-05-27 | 2d? → 1d? | 100% → 0% | none → 56.71d |  |
| 44 | 概要设计1任务 | 2004-05-21 A → 2004-05-20 (-1d) | 2004-05-24 A → 2004-05-21 (-3d) | 2d? → 1.25d? | 100% → 0% | none → -33.05d |  |
| 45 | 概要设计2任务 | 2004-05-24 A → 2004-05-24 | 2004-05-28 A → 2004-05-28 | 5d? → 1.25d? | 100% → 0% | none → -33.05d |  |
| 46 | 概要设计同行评审 | 2004-05-28 A → 2004-05-28 | 2004-05-28 A → 2004-05-28 | 1d? → 0.5d? | 100% → 0% | none → -33.05d |  |
| 47 | 概要设计返工 | 2004-05-28 A → 2004-05-28 | 2004-05-31 A → 2004-05-31 | 2d? → 1d? | 100% → 0% | none → -33.05d |  |
| 48 | 接口设计 | 2004-05-31 A → 2004-05-31 | 2004-06-01 A → 2004-06-01 | 2d? → 1d? | 100% → 0% | none → -33.05d |  |
| 49 | 接口设计评审 | 2004-06-01 A → 2004-06-01 | 2004-06-02 A → 2004-06-02 | 2d? → 0.5d? | 100% → 0% | none → -33.05d |  |
| 50 | 集成测试用例设计 | 2004-06-02 A → 2004-06-02 | 2004-06-04 A → 2004-06-04 | 3d? → 1.88d? | 100% → 0% | none → -33.05d |  |
| 51 | 集成测试用例项目评审 | 2004-06-04 A → 2004-06-04 | 2004-06-04 A → 2004-06-04 | 1d? → 0.33d? | 100% → 0% | none → -33.05d |  |
| 52 | 集成测试用例返工 | 2004-06-04 A → 2004-06-04 | 2004-06-07 A → 2004-06-07 | 2d? → 1d? | 100% → 0% | none → -33.05d |  |
| 53 | 详细设计1任务 | 2004-06-07 A → 2004-06-07 | 2004-06-10 A → 2004-06-09 (-1d) | 4d? → 2.5d? | 100% → 0% | none → -33.05d |  |
| 54 | 详细设计2任务 | 2004-06-10 A → 2004-06-09 (-1d) | 2004-06-15 A → 2004-06-15 | 4d? → 3.75d? | 100% → 0% | none → 43.26d |  |
| 55 | 详细设计走查 | 2004-06-14 A → 2004-06-14 | 2004-06-17 A → 2004-06-17 |  | 100% → 0% | none → 11.96d |  |
| 56 | 详细设计返工 | 2004-06-18 A → 2004-06-18 | 2004-06-18 A → 2004-06-18 |  | 100% → 0% | none → 11.96d |  |
| 57 | 设计阶段需求功能矩阵跟踪 | 2004-06-21 A → 2004-06-21 | 2004-06-21 A → 2004-06-21 |  | 100% → 0% | none → 24d |  |
| 58 | 设计阶段度量数据收集 | 2004-07-12 A → 2004-07-12 | 2004-07-12 A → 2004-07-12 |  | 100% → 0% | none → 23.96d |  |
| 59 | 用户操作手册编写 | 2004-05-20 A → 2004-05-20 | 2004-05-21 A → 2004-05-21 | 1.75d? → 1d? | 100% → 0% | none → 60.21d |  |
| 60 | 用户安装手册编写 | 2004-06-04 A → 2004-06-04 | 2004-06-08 A → 2004-06-08 | 2d? → 1d? | 100% → 0% | none → 48.71d |  |
| 61 | 用户维护手册编写 | 2004-06-21 A → 2004-06-21 | 2004-06-24 A → 2004-06-24 | 2.29d? → 1d? | 100% → 0% | none → 30d |  |
| 62 | 设计里程碑报告 | 2004-06-21 A → 2004-06-21 | 2004-07-02 A → 2004-07-02 | 6.33d? → 5d? | 100% → 0% | none → 30.79d |  |
| 63 | **编码和单元测试任务** | 2004-06-11 A → 2004-06-09 (-2d) | 2004-07-16 A → 2004-07-16 | 26d? → 26.12d? | 100% → 0% | none → -33.05d |  |
| 64 | 设计培训 | 2004-06-21 A → 2004-06-21 | 2004-06-21 A → 2004-06-21 |  | 100% → 0% | none → 20.9d |  |
| 65 | 编码培训 | 2004-07-15 A → 2004-07-15 | 2004-07-16 A → 2004-07-16 | 2d? → 1d? | 100% → 0% | none → 20.9d |  |
| 66 | 单元测试用例设计 | 2004-06-25 A → 2004-06-24 (-1d) | 2004-06-30 A → 2004-06-29 (-1d) | 4d? → 3.75d? | 100% → 0% | none → 30d |  |
| 67 | 单元测试用例非正式评审 | 2004-06-30 A → 2004-06-29 (-1d) | 2004-07-01 A → 2004-06-30 (-1d) | 2d? → 1d? | 100% → 0% | none → 30d |  |
| 68 | 单元测试用例返工 | 2004-07-01 A → 2004-06-30 (-1d) | 2004-07-02 A → 2004-07-01 (-1d) | 2d? → 1d? | 100% → 0% | none → 31d |  |
| 69 | 编码1任务 | 2004-06-11 A → 2004-06-09 (-2d) | 2004-06-15 A → 2004-06-14 (-1d) | 3d? → 2.5d? | 100% → 0% | none → -33.05d |  |
| 70 | 编码2任务 | 2004-06-15 A → 2004-06-14 (-1d) | 2004-06-17 A → 2004-06-16 (-1d) | 3d? → 1.88d? | 100% → 0% | none → 21.67d |  |
| 71 | 编码3任务 | 2004-06-17 A → 2004-06-16 (-1d) | 2004-06-23 A → 2004-06-22 (-1d) | 5d? → 3.75d? | 100% → 0% | none → 35.89d |  |
| 72 | 编码4任务 | 2004-06-23 A → 2004-06-22 (-1d) | 2004-06-25 A → 2004-06-24 (-1d) | 3d? → 2.5d? | 100% → 0% | none → 36.39d |  |
| 73 | 编码走查 | 2004-06-21 A → 2004-06-21 | 2004-07-09 A → 2004-07-08 (-1d) | 2.18d? → 1d? | 100% → 0% | none → 26.14d |  |

| ID | Task | Start | Finish | Duration | Complete | Total float | Predecessors | Other |
| --- | --- | --- | --- | --- | --- | --- | --- | --- |
| 74 | 单元测试1 | 2004-06-15 A → 2004-06-14 (-1d) | 2004-06-17 A → 2004-06-16 (-1d) | 3d? → 2.5d? | 100% → 0% | none → -33.05d |  |  |
| 75 | 单元测试2 | 2004-06-18 A → 2004-06-16 (-2d) | 2004-06-24 A → 2004-06-23 (-1d) | 5d? → 4.38d? | 100% → 0% | none → -33.05d |  |  |
| 76 | 集成任务1 | 2004-06-24 A → 2004-06-23 (-1d) | 2004-06-25 A → 2004-06-24 (-1d) | 2d? → 1.5d? | 100% → 0% | none → -33.05d |  |  |
| 77 | 集成任务2 | 2004-06-25 A → 2004-06-24 (-1d) | 2004-06-30 A → 2004-06-29 (-1d) | 4d? → 2.5d? | 100% → 0% | none → -33.05d |  |  |
| 78 | 用户文档评审 | 2004-06-30 A → 2004-06-29 (-1d) | 2004-07-09 A → 2004-07-08 (-1d) | 2.19d? → 1d? | 100% → 0% | none → -33.05d |  |  |
| 79 | 用户文档返工 | 2004-07-09 A → 2004-07-08 (-1d) | 2004-07-14 A → 2004-07-13 (-1d) | 1.33d? → 1d? | 100% → 0% | none → -33.05d |  |  |
| 80 | 单元测试编码返工 | 2004-06-24 A → 2004-06-23 (-1d) | 2004-06-25 A → 2004-06-24 (-1d) | 2d? → 1d? | 100% → 0% | none → 21.79d |  |  |
| 81 | 需求功能矩阵跟踪 | 2004-06-25 A → 2004-06-24 (-1d) | 2004-06-28 A → 2004-06-25 (-3d) | 2d? → 1d? | 100% → 0% | none → 21.79d |  |  |
| 82 | 编码阶段度量数据收集 | 2004-07-07 A → 2004-07-05 (-2d) | 2004-07-14 A → 2004-07-09 (-5d) | 2.12d? → 1d? | 100% → 0% | none → 23.08d |  |  |
| 83 | 编码里程碑报告 | 2004-07-14 A → 2004-07-09 (-5d) | 2004-07-15 A → 2004-07-12 (-3d) | 2d? → 1d? | 100% → 0% | none → 24.08d |  |  |
| 84 | **测试阶段任务** | 2004-07-15 A → 2004-07-13 (-2d) | 2004-08-13 A → 2004-08-12 (-1d) | 22d? → 21.5d? | 100% → 0% | none → -33.05d |  |  |
| 85 | 集成测试培训 | 2004-07-15 A → 2004-07-13 (-2d) | 2004-07-15 A → 2004-07-14 (-1d) |  | 100% → 0% | none → -33.05d |  |  |
| 86 | 集成测试任务 | 2004-07-16 A → 2004-07-14 (-2d) | 2004-07-26 A → 2004-07-23 (-3d) | 7d? → 6.25d? | 100% → 0% | none → -33.05d |  |  |
| 87 | 集成测试报告编写 | 2004-07-26 A → 2004-07-23 (-3d) | 2004-07-27 A → 2004-07-26 (-1d) | 2d? → 1.25d? | 100% → 0% | none → 14.66d |  |  |
| 88 | 集成测试编码返工 | 2004-07-26 A → 2004-07-23 (-3d) | 2004-07-27 A → 2004-07-26 (-1d) | 2d? → 1d? | 100% → 0% | none → -33.05d |  |  |
| 89 | 系统测试培训 | 2004-07-27 A → 2004-07-26 (-1d) | 2004-07-28 A → 2004-07-27 (-1d) | 2d? → 1d? | 100% → 0% | none → -33.05d |  |  |
| 90 | 系统测试任务 | 2004-07-28 A → 2004-07-27 (-1d) | 2004-08-04 A → 2004-08-03 (-1d) | 6d? → 5d? | 100% → 0% | none → -5.3d |  |  |
| 91 | 系统测试报告编写 | 2004-08-04 A → 2004-08-03 (-1d) | 2004-08-05 A → 2004-08-04 (-1d) | 2d? → 1.25d? | 100% → 0% | none → -5.3d |  |  |
| 92 | 系统测试编码返工 | 2004-08-05 A → 2004-08-04 (-1d) | 2004-08-06 A → 2004-08-05 (-1d) | 2d? → 1d? | 100% → 0% | none → -5.3d |  |  |
| 93 | 测试阶段需求功能矩阵跟踪 | 2004-08-06 A → 2004-08-05 (-1d) | 2004-08-09 A → 2004-08-06 (-3d) | 2d? → 1d? | 100% → 0% | none → 0.66d |  |  |
| 94 | 测试阶段度量数据收集 | 2004-08-09 A → 2004-08-06 (-3d) | 2004-08-10 A → 2004-08-09 (-1d) | 2d? → 1d? | 100% → 0% | none → 0.66d |  |  |
| 95 | 测试里程碑报告 | 2004-08-10 A → 2004-08-09 (-1d) | 2004-08-11 A → 2004-08-10 (-1d) | 2d? → 1d? | 100% → 0% | none → 0.66d |  |  |
| 96 | 用户体验 | 2004-08-11 A → 2004-08-10 (-1d) | 2004-08-12 A → 2004-08-11 (-1d) | 2d? → 1d? | 100% → 0% | none → 0.66d |  |  |
| 97 | 研发体验 | 2004-08-12 A → 2004-08-11 (-1d) | 2004-08-13 A → 2004-08-12 (-1d) | 2d? → 1d? | 100% → 0% | none → 1.66d | 96, 95 → 96 |  |
| 98 | **项目策划** | 2004-08-16 A → 2004-05-10 A (-98d) | 2004-08-20 A → 2004-07-13 (-38d) | 5d? → 47d | 100% → 22% |  |  | was named 验收阶段任务 |
| 99 | 项目立项 | 2004-08-16 A → 2004-05-21 (-87d) | 2004-08-16 A → 2004-05-24 (-84d) | 1d? → 2d? | 100% → 0% | none → 58.96d | 97, 96 → none | was named 项目试运行; constraint none → finish no earlier than 2004-05-24; resources 测试负责人; 编码人员; 项目经理 → 项目经理 |
| 100 | 定义需求开发过程 | 2004-08-16 A → 2004-05-10 A (-98d) | 2004-08-20 A → 2004-05-25 (-87d) | 5d? → 2d? | 100% → 44% | none → 58.71d | 99 → 3 | was named 项目总结; constraint none → finish no earlier than 2004-05-11 |
| 101 | **制订需求开发计划** | 2004-05-10 A → 2004-05-11 (+1d) | 2004-07-12 A → 2004-05-12 (-61d) | 46d → 2d | 100% → 0% |  | none → 4 | was named 需求变更控制; resources none → 项目经理 |
| 102 | 需求变更控制 1 | 2004-05-10 A → 2004-05-10 | 2004-05-10 A → 2004-05-10 |  | 100% → 0% | none → 68.96d |  |  |
| 103 | 需求变更控制 2 | 2004-06-10 A → 2004-06-10 | 2004-06-10 A → 2004-06-10 |  | 100% → 0% | none → 45.96d |  |  |
| 104 | 需求变更控制 3 | 2004-07-12 A → 2004-07-12 | 2004-07-12 A → 2004-07-12 |  | 100% → 0% | none → 23.96d |  |  |
| 105 | **项目团队建立** | 2004-05-13 A → 2004-05-12 (-1d) | 2004-07-23 A → 2004-05-14 (-70d) | 52d? → 3d | 100% → 0% |  | none → 3 | was named 项目跟踪与监控活动; resources none → 项目经理 |
| 106 | **项目策划培训** | 2004-05-19 A → 2004-05-17 (-2d) | 2004-07-21 A → 2004-05-17 (-65d) | 46d → 1d | 100% → 0% |  | none → 6 | was named 计划变更控制 |
| 107 | 项目软件生命周期模型选择 | 2004-05-19 A → 2004-05-18 (-1d) | 2004-05-19 A → 2004-05-20 (+1d) | 1d → 3d | 100% → 0% | none → 60.96d | none → 7 | was named 计划变更控制 1; constraint start no earlier than 2004-05-19 → finish no earlier than 2004-05-20; resources 项目经理 → 项目经理; QA |
| 108 | 定义项目的软件过程 | 2004-06-16 A → 2004-05-27 (-20d) | 2004-06-16 A → 2004-05-31 (-16d) | 1d → 2d | 100% → 0% | none → 54.29d | none → 34 | was named 计划变更控制 2; constraint start no earlier than 2004-06-16 → finish no earlier than 2004-05-28; resources 项目经理 → 项目经理; QA |
| 109 | 技术任务WBS拆分 | 2004-07-21 A → 2004-05-28 (-54d) | 2004-07-21 A → 2004-06-02 (-49d) | 1d → 3d | 100% → 0% | none → 52.29d | none → 9 | was named 计划变更控制 3; constraint start no earlier than 2004-07-21 → finish no earlier than 2004-06-01 |
| 110 | **管理任务WBS拆分** | 2004-05-13 A → 2004-06-01 (+19d) | 2004-07-08 A → 2004-06-03 (-35d) | 41d → 3d | 100% → 0% |  | none → 10 | was named 接口及集成活动跟踪; resources none → 项目经理 |
| 111 | 制定估计策略 | 2004-05-13 A → 2004-06-03 (+21d) | 2004-05-13 A → 2004-06-07 (+25d) | 1d → 2d | 100% → 0% | none → 49.96d | none → 11 | was named 接口及集成活动跟踪 1; constraint start no earlier than 2004-05-13 → finish no earlier than 2004-06-04 |
| 112 | 技术任务规模估计 | 2004-05-20 A → 2004-06-04 (+15d) | 2004-05-20 A → 2004-06-07 (+18d) |  | 100% → 0% | none → 49.71d | none → 12 | was named 接口及集成活动跟踪 2; constraint start no earlier than 2004-05-20 → finish no earlier than 2004-06-04; resources 项目经理 → 项目经理; QA; 专家 |
| 113 | 技术任务工作量估计 | 2004-05-27 A → 2004-06-04 (+8d) | 2004-05-27 A → 2004-06-09 (+13d) | 1d → 3d | 100% → 0% | none → 47.37d | none → 13 | was named 接口及集成活动跟踪 3; constraint start no earlier than 2004-05-27 → finish no earlier than 2004-06-08; resources 项目经理 → 项目经理; QA; 专家 |
| 114 | 关键计算机资源估计 | 2004-06-03 A → 2004-06-08 (+5d) | 2004-06-03 A → 2004-06-10 (+7d) | 1d → 2d | 100% → 0% | none → 46.12d | none → 14 | was named 接口及集成活动跟踪 4; constraint start no earlier than 2004-06-03 → finish no earlier than 2004-06-09; resources 项目经理 → 项目经理; QA |
| 115 | 工程设备和支持工具估计 | 2004-06-10 A → 2004-06-09 (-1d) | 2004-06-10 A → 2004-06-11 (+1d) | 1d → 2d | 100% → 0% | none → 45.12d | none → 15 | was named 接口及集成活动跟踪 5; constraint start no earlier than 2004-06-10 → finish no earlier than 2004-06-10; resources 项目经理 → 项目经理; QA |
| 116 | 制定风险管理计划 | 2004-06-17 A → 2004-06-10 (-7d) | 2004-06-17 A → 2004-06-16 (-1d) | 1d → 4d | 100% → 0% | none → 42.12d | none → 16 | was named 接口及集成活动跟踪 6; constraint start no earlier than 2004-06-17 → finish no earlier than 2004-06-15 |
| 117 | 制定同行评审计划 | 2004-06-24 A → 2004-06-15 (-9d) | 2004-06-24 A → 2004-06-18 (-6d) | 1d → 3d | 100% → 0% | none → 40.88d | none → 17 | was named 接口及集成活动跟踪 7; constraint start no earlier than 2004-06-24 → finish no earlier than 2004-06-17 |
| 118 | 制定培训计划 | 2004-07-01 A → 2004-06-17 (-14d) | 2004-07-01 A → 2004-06-21 (-10d) | 1d → 2d | 100% → 0% | none → 39.62d | none → 18 | was named 接口及集成活动跟踪 8; constraint start no earlier than 2004-07-01 → finish no earlier than 2004-06-18 |
| 119 | 明细任务日程安排 | 2004-07-08 A → 2004-06-22 (-16d) | 2004-07-08 A → 2004-06-25 (-13d) | 1d → 3d | 100% → 0% | none → 35.25d | none → 21 | was named 接口及集成活动跟踪 9; constraint start no earlier than 2004-07-08 → finish no earlier than 2004-06-22 |
| 120 | **制定配置管理计划** | 2004-05-14 A → 2004-06-22 (+39d) | 2004-07-23 A → 2004-06-23 (-30d) | 51d → 2d | 100% → 0% |  | none → 22 | was named 周例会; resources none → CM |
| 121 | 制定测试计划 | 2004-05-14 A → 2004-06-25 (+42d) | 2004-05-14 A → 2004-06-29 (+46d) | 1d → 2d | 100% → 0% | none → 33.25d | none → 23 | was named 周例会 1; constraint start no earlier than 2004-05-14 → finish no earlier than 2004-06-24; resources 项目组; QA → 测试负责人 |
| 122 | 制定质量保证计划 | 2004-05-21 A → 2004-06-28 (+38d) | 2004-05-21 A → 2004-06-30 (+40d) | 1d → 2d | 100% → 0% | none → 32.25d | none → 24 | was named 周例会 2; constraint start no earlier than 2004-05-21 → finish no earlier than 2004-06-25; resources 项目组; QA → QA |
| 123 | 制定项目度量收集计划 | 2004-05-28 A → 2004-06-29 (+32d) | 2004-05-28 A → 2004-07-12 (+45d) | 1d → 9d | 100% → 0% | none → 24.25d | none → 25 | was named 周例会 3; constraint start no earlier than 2004-05-28 → finish no earlier than 2004-07-07; resources 项目组; QA → 项目经理 |
| 124 | 制定组间协调计划 | 2004-06-04 A → 2004-07-09 (+35d) | 2004-06-04 A → 2004-07-13 (+39d) | 1d → 2d | 100% → 0% | none → 23.39d | none → 26 | was named 周例会 4; constraint start no earlier than 2004-06-04 → finish no earlier than 2004-07-08; resources 项目组; QA → 项目经理 |
| 125 | 计划评审 | 2004-06-11 A → 2004-07-12 (+31d) | 2004-06-11 A → 2004-07-14 (+33d) | 1d → 2d | 100% → 0% | none → 22.39d | none → 27 | was named 周例会 5; constraint start no earlier than 2004-06-11 → finish no earlier than 2004-07-12; resources 项目组; QA → 项目经理 |
| 126 | 计划返工 | 2004-06-18 A → 2004-07-14 (+26d) | 2004-06-18 A → 2004-07-16 (+28d) | 1d → 2d | 100% → 0% | none → 20.29d | none → 28 | was named 周例会 6; constraint start no earlier than 2004-06-18 → finish no earlier than 2004-07-13; resources none → 项目经理 |
| 127 | 需求阶段任务 | 2004-06-25 A → 2004-05-10 (-46d) | 2004-06-25 A → 2004-05-27 (-29d) | 1d → 14d | 100% → 0% | none → 55.96d |  | was named 周例会 7; constraint start no earlier than 2004-06-25 → finish no earlier than 2004-05-27 |
| 128 | 需求收集活动 | 2004-07-02 A → 2004-05-12 (-51d) | 2004-07-02 A → 2004-05-14 (-49d) | 1d → 2d | 100% → 0% | none → 65.46d | none → 5 | was named 周例会 8; constraint start no earlier than 2004-07-02 → finish no earlier than 2004-05-13; resources none → 需求人员 |
| 129 | 需求分析活动 | 2004-07-09 A → 2004-05-13 (-57d) | 2004-07-09 A → 2004-05-21 (-49d) | 1d → 6d | 100% → 0% | none → 60.21d | none → 31 | was named 周例会 9; constraint start no earlier than 2004-07-09 → finish no earlier than 2004-05-20; resources none → 需求人员 |
| 130 | 需求同行评审 | 2004-07-16 A → 2004-05-20 (-57d) | 2004-07-16 A → 2004-05-28 (-49d) | 1d → 6d | 100% → 0% | none → 55.21d | none → 32 | was named 周例会 10; constraint start no earlier than 2004-07-16 → finish no earlier than 2004-05-27; resources none → CCB |
| 131 | 需求问题返工 | 2004-07-23 A → 2004-05-27 (-57d) | 2004-07-23 A → 2004-05-28 (-56d) |  | 100% → 0% | none → 55.84d | none → 33 | was named 周例会 11; constraint start no earlier than 2004-07-23 → finish no earlier than 2004-05-27; resources none → 需求人员 |
| 132 | **需求功能矩阵建立** | 2004-05-14 A → 2004-05-27 (+13d) | 2004-07-23 A → 2004-05-27 (-57d) | 51d → 1d | 100% → 0% |  | none → 33 | was named 项目周报编写; resources none → 需求人员 |
| 133 | 需求阶段度量数据收集 | 2004-05-14 A → 2004-05-10 (-4d) | 2004-05-14 A → 2004-05-18 (+4d) | 1d → 7d | 100% → 0% | none → 62.96d |  | was named 项目周报编写 1; constraint start no earlier than 2004-05-14 → finish no earlier than 2004-05-18; resources 项目组; QA → 项目经理 |
| 134 | 需求里程碑报告 | 2004-05-21 A → 2004-05-21 | 2004-05-21 A → 2004-05-24 (+3d) | 1d → 2d | 100% → 0% | none → 58.96d |  | was named 项目周报编写 2; constraint start no earlier than 2004-05-21 → finish no earlier than 2004-05-24; resources 项目组; QA → 项目经理 |
| 135 | 设计阶段任务 | 2004-05-28 A → 2004-05-10 (-18d) | 2004-05-28 A → 2004-07-12 (+45d) | 1d → 46d | 100% → 0% | none → 23.96d |  | was named 项目周报编写 3; constraint start no earlier than 2004-05-28 → finish no earlier than 2004-07-12; resources 项目组; QA → none |
| 136 | 需求培训 | 2004-06-04 A → 2004-05-10 (-25d) | 2004-06-04 A → 2004-05-10 (-25d) |  | 100% → 0% | none → 68.96d |  | was named 项目周报编写 4; constraint start no earlier than 2004-06-04 → start no earlier than 2004-05-10; resources 项目组; QA → 需求人员 |
| 137 | 系统测试用例设计 | 2004-06-11 A → 2004-05-20 (-22d) | 2004-06-11 A → 2004-05-26 (-16d) | 1d → 4d | 100% → 0% | none → 57.21d | none → 32 | was named 项目周报编写 5; constraint start no earlier than 2004-06-11 → finish no earlier than 2004-05-25; resources 项目组; QA → 测试负责人 |
| 138 | 系统测试方案编写 | 2004-06-18 A → 2004-05-20 (-29d) | 2004-06-18 A → 2004-05-24 (-25d) | 1d → 2d | 100% → 0% | none → 59.21d | none → 32 | was named 项目周报编写 6; constraint start no earlier than 2004-06-18 → finish no earlier than 2004-05-21; resources 项目组; QA → 测试负责人 |
| 139 | 系统测试用例同行评审 | 2004-06-25 A → 2004-05-25 (-31d) | 2004-06-25 A → 2004-05-27 (-29d) | 1d → 2d | 100% → 0% | none → 56.71d | none → 40 | was named 项目周报编写 7; constraint start no earlier than 2004-06-25 → finish no earlier than 2004-05-26; resources 项目组; QA → 项目经理; 测试负责人 |
| 140 | 系统测试用例返工 | 2004-07-02 A → 2004-05-26 (-37d) | 2004-07-02 A → 2004-05-28 (-35d) | 1d → 2d | 100% → 0% | none → 55.71d | none → 42 | was named 项目周报编写 8; constraint start no earlier than 2004-07-02 → finish no earlier than 2004-05-27; resources 项目组; QA → 测试人员 |
| 141 | 概要设计1任务 | 2004-07-09 A → 2004-05-20 (-50d) | 2004-07-09 A → 2004-05-24 (-46d) | 1d → 2d | 100% → 0% | none → 59.21d | none → 32 | was named 项目周报编写 9; constraint start no earlier than 2004-07-09 → finish no earlier than 2004-05-21; resources 项目组; QA → 测试人员; 设计人员 |
| 142 | 概要设计2任务 | 2004-07-16 A → 2004-05-24 (-53d) | 2004-07-16 A → 2004-05-28 (-49d) | 1d → 5d | 100% → 0% | none → 54.96d | none → 44 | was named 项目周报编写 10; constraint start no earlier than 2004-07-16 → finish no earlier than 2004-05-28; resources 项目组; QA → 编码人员; 外部专家 |
| 143 | 概要设计同行评审 | 2004-07-23 A → 2004-05-28 (-56d) | 2004-07-23 A → 2004-05-31 (-53d) |  | 100% → 0% | none → 54.72d | none → 45 | was named 项目周报编写 11; constraint start no earlier than 2004-07-23 → finish no earlier than 2004-05-28; resources 项目组; QA → 项目经理; 设计人员 |

| ID | Task | Start | Finish | Duration | Complete | Total float | Predecessors | Other |
| --- | --- | --- | --- | --- | --- | --- | --- | --- |
| 144 | **概要设计返工** | 2004-05-14 A → 2004-05-28 (+14d) | 2004-07-23 A → 2004-05-31 (-53d) | 51d → 2d | 100% → 0% |  | none → 46 | was named 项目问题和风险管理; resources none → 设计人员 |
| 145 | 接口设计 | 2004-05-14 A → 2004-05-31 (+17d) | 2004-05-14 A → 2004-06-02 (+19d) | 1d → 2d | 100% → 0% | none → 52.22d | none → 47 | was named 项目问题和风险管理 1; constraint start no earlier than 2004-05-14 → finish no earlier than 2004-06-01; resources 项目经理 → 设计人员 |
| 146 | 接口设计评审 | 2004-05-21 A → 2004-06-01 (+11d) | 2004-05-21 A → 2004-06-03 (+13d) | 1d → 2d | 100% → 0% | none → 51.22d | none → 48 | was named 项目问题和风险管理 2; constraint start no earlier than 2004-05-21 → finish no earlier than 2004-06-02; resources 项目经理 → 项目经理; 设计人员 |
| 147 | 集成测试用例设计 | 2004-05-28 A → 2004-06-02 (+5d) | 2004-05-28 A → 2004-06-07 (+10d) | 1d → 3d | 100% → 0% | none → 49.72d | none → 49 | was named 项目问题和风险管理 3; constraint start no earlier than 2004-05-28 → finish no earlier than 2004-06-04; resources 项目经理 → 测试人员 |
| 148 | 集成测试用例项目评审 | 2004-06-04 A → 2004-06-04 | 2004-06-04 A → 2004-06-07 (+3d) |  | 100% → 0% | none → 49.84d | none → 50 | was named 项目问题和风险管理 4; constraint start no earlier than 2004-06-04 → finish no earlier than 2004-06-04; resources 项目经理 → 项目经理; 测试人员; 测试负责人 |
| 149 | 集成测试用例返工 | 2004-06-11 A → 2004-06-04 (-7d) | 2004-06-11 A → 2004-06-08 (-3d) | 1d → 2d | 100% → 0% | none → 48.51d | none → 51 | was named 项目问题和风险管理 5; constraint start no earlier than 2004-06-11 → finish no earlier than 2004-06-07; resources 项目经理 → 测试人员 |
| 150 | 详细设计1任务 | 2004-06-18 A → 2004-06-07 (-11d) | 2004-06-18 A → 2004-06-10 (-8d) | 1d → 3d | 100% → 0% | none → 46.51d | none → 52 | was named 项目问题和风险管理 6; constraint start no earlier than 2004-06-18 → finish no earlier than 2004-06-09; resources 项目经理 → 设计人员 |
| 151 | 详细设计2任务 | 2004-06-25 A → 2004-06-09 (-16d) | 2004-06-25 A → 2004-06-16 (-9d) | 1d → 5d | 100% → 0% | none → 42.01d | none → 53 | was named 项目问题和风险管理 7; constraint start no earlier than 2004-06-25 → finish no earlier than 2004-06-15; resources 项目经理 → 设计人员 |
| 152 | 详细设计走查 | 2004-07-02 A → 2004-06-14 (-18d) | 2004-07-02 A → 2004-06-17 (-15d) | 1d → 4d | 100% → 0% | none → 40.96d | none → 52, 53 | was named 项目问题和风险管理 8; constraint start no earlier than 2004-07-02 → finish no earlier than 2004-06-17 |
| 153 | 详细设计返工 | 2004-07-09 A → 2004-06-18 (-21d) | 2004-07-09 A → 2004-06-18 (-21d) |  | 100% → 0% | none → 39.96d | none → 55 | was named 项目问题和风险管理 9; constraint start no earlier than 2004-07-09 → start no earlier than 2004-06-18; resources 项目经理 → 设计人员 |
| 154 | 设计阶段需求功能矩阵跟踪 | 2004-07-16 A → 2004-06-21 (-25d) | 2004-07-16 A → 2004-06-21 (-25d) |  | 100% → 0% | none → 38.96d | none → 56 | was named 项目问题和风险管理 10; constraint start no earlier than 2004-07-16 → start no earlier than 2004-06-21; resources 项目经理 → 需求人员 |
| 155 | 设计阶段度量数据收集 | 2004-07-23 A → 2004-07-12 (-11d) | 2004-07-23 A → 2004-07-12 (-11d) |  | 100% → 0% | none → 23.96d | none → 57 | was named 项目问题和风险管理 11; constraint start no earlier than 2004-07-23 → start no earlier than 2004-07-12 |
| 156 | 用户操作手册编写 | 2004-07-05 A → 2004-05-20 (-46d) | 2004-07-15 A → 2004-05-21 (-55d) | 1.47d? → 0.94d? | 100% → 0% | none → 59.96d | 62 → 39 | was named 组间协调; constraint none → finish no earlier than 2004-05-21 |
| 157 | **用户安装手册编写** | 2004-05-10 A → 2004-06-04 (+25d) | 2004-08-18 A → 2004-06-08 (-71d) | 73d? → 3d | 100% → 0% |  | none → 47 | was named 质量保证任务; resources none → 项目经理 |
| 158 | 用户维护手册编写 | 2004-05-11 A → 2004-06-21 (+41d) | 2004-05-11 A → 2004-06-24 (+44d) | 1d? → 4d? | 100% → 0% | none → 35.96d | 39 → 56 | was named 质量保证活动培训; constraint none → finish no earlier than 2004-06-24; resources QA → 项目经理 |
| 159 | **设计里程碑报告** | 2004-05-10 A → 2004-06-21 (+42d) | 2004-08-17 A → 2004-07-02 (-46d) | 72d? → 10d | 100% → 0% |  | none → 56 | was named QA过程评审; resources none → 项目经理 |
| 160 | 编码和单元测试任务 | 2004-05-10 A → 2004-06-09 (+30d) | 2004-05-10 A → 2004-07-16 (+67d) | 1d? → 28d? | 100% → 0% | none → 19.96d |  | was named 需求管理过程评审; constraint none → finish no earlier than 2004-07-16; resources QA → none |
| 161 | 设计培训 | 2004-05-10 A → 2004-06-21 (+42d) | 2004-05-10 A → 2004-06-21 (+42d) |  | 100% → 0% | none → 38.96d | none → 56 | was named 项目策划过程评审; constraint none → start no earlier than 2004-06-21; resources QA → 设计人员 |
| 162 | 编码培训 | 2004-05-10 A → 2004-07-15 (+66d) | 2004-05-10 A → 2004-07-16 (+67d) | 1d? → 2d? | 100% → 0% | none → 19.96d | none → 64 | was named 项目跟踪与监控过程评审; constraint none → finish no earlier than 2004-07-16; resources QA → 项目经理 |
| 163 | 单元测试用例设计 | 2004-05-10 A → 2004-06-24 (+45d) | 2004-05-10 A → 2004-06-30 (+51d) | 1d? → 4d? | 100% → 0% | none → 32.75d | 162 → 53, 61 | was named 项目配置管理过程评审; constraint none → finish no earlier than 2004-06-29; resources QA → 测试人员 |
| 164 | 单元测试用例非正式评审 | 2004-05-10 A → 2004-06-29 (+50d) | 2004-05-10 A → 2004-07-01 (+52d) | 1d? → 2d? | 100% → 0% | none → 31d | 163 → 66 | was named 项目培训过程评审; constraint none → finish no earlier than 2004-06-30; resources QA → 测试负责人 |
| 165 | 单元测试用例返工 | 2004-05-10 A → 2004-06-30 (+51d) | 2004-05-10 A → 2004-07-02 (+53d) | 1d? → 2d? | 100% → 0% | none → 30d | 164 → 67 | was named 项目软件产品工程评审; constraint none → finish no earlier than 2004-07-01; resources QA → 测试人员 |
| 166 | 编码1任务 | 2004-05-11 A → 2004-06-09 (+29d) | 2004-05-11 A → 2004-06-15 (+35d) | 1d? → 4d? | 100% → 0% | none → 43.01d | 165 → 53 | was named 同行评审过程评审; constraint none → finish no earlier than 2004-06-14; resources QA → 编码人员 |
| 167 | 编码2任务 | 2004-05-11 A → 2004-06-14 (+34d) | 2004-05-11 A → 2004-06-17 (+37d) | 1d? → 3d? | 100% → 0% | none → 41.51d | 166 → 69 | was named 组间协调过程评审; constraint none → finish no earlier than 2004-06-16; resources QA → 编码人员 |
| 168 | 编码3任务 | 2004-08-17 A → 2004-06-16 (-62d) | 2004-08-17 A → 2004-06-23 (-55d) | 1d? → 5d? | 100% → 0% | none → 37.64d | 99 → 70 | was named 外部专家对SQA的评审; constraint none → finish no earlier than 2004-06-22; resources 外部专家 → 编码人员 |
| 169 | 编码4任务 | 2004-08-17 A → 2004-06-22 (-56d) | 2004-08-18 A → 2004-06-25 (-54d) | 2d? → 3d? | 100% → 0% | none → 35.89d | 159 → 71 | was named QA过程问题跟踪; constraint none → finish no earlier than 2004-06-24; resources QA [50%] → 编码人员 |
| 170 | **编码走查** | 2004-05-10 A → 2004-06-21 (+42d) | 2004-05-10 A → 2004-07-08 (+59d) | 1d? → 14d | 100% → 0% |  | none → 70 | was named QA产品审计; resources none → 项目经理 |
| 171 | 单元测试1 | 2004-05-10 A → 2004-06-14 (+35d) | 2004-05-10 A → 2004-06-17 (+38d) | 1d? → 3d? | 100% → 0% | none → 41.51d | none → 69 | was named 软件需求规格说明书产品审计; constraint none → finish no earlier than 2004-06-16; resources QA → 测试人员 |
| 172 | 单元测试2 | 2004-05-10 A → 2004-06-16 (+37d) | 2004-05-10 A → 2004-06-24 (+45d) | 1d? → 6d? | 100% → 0% | none → 36.01d | none → 74 | was named 概要设计说明书产品审计; constraint none → finish no earlier than 2004-06-23; resources QA → 测试人员 |
| 173 | 集成任务1 | 2004-05-10 A → 2004-06-23 (+44d) | 2004-05-10 A → 2004-06-25 (+46d) | 1d? → 2d? | 100% → 0% | none → 35.64d | none → 75 | was named 用户文档产品审计; constraint none → finish no earlier than 2004-06-24; resources QA → 集成人员 |
| 174 | 集成任务2 | 2004-05-10 A → 2004-06-24 (+45d) | 2004-05-11 A → 2004-06-30 (+50d) | 2d? → 4d? | 100% → 0% | none → 32.14d | 170 → 76 | was named QA产品审计问题跟踪; constraint none → finish no earlier than 2004-06-29; resources QA [25%] → 集成人员 |
| 175 | **用户文档评审** | 2004-05-12 A → 2004-06-29 (+48d) | 2004-07-21 A → 2004-07-08 (-13d) | 51d → 8d | 100% → 0% |  | none → 77 | was named QA项目支持任务; resources none → 项目经理 |
| 176 | 用户文档返工 | 2004-05-12 A → 2004-07-08 (+57d) | 2004-05-12 A → 2004-07-14 (+63d) | 1d → 4d | 100% → 0% | none → 22.83d | none → 78 | was named QA项目支持任务 1; constraint start no earlier than 2004-05-12 → finish no earlier than 2004-07-13; resources QA [50%] → 项目经理 |
| 177 | 单元测试编码返工 | 2004-05-19 A → 2004-06-23 (+35d) | 2004-05-19 A → 2004-06-25 (+37d) | 1d → 2d | 100% → 0% | none → 35.64d | none → 74, 75 | was named QA项目支持任务 2; constraint start no earlier than 2004-05-19 → finish no earlier than 2004-06-24; resources QA [50%] → 编码人员 |
| 178 | 需求功能矩阵跟踪 | 2004-05-26 A → 2004-06-24 (+29d) | 2004-05-26 A → 2004-06-28 (+33d) | 1d → 2d | 100% → 0% | none → 34.64d | none → 80 | was named QA项目支持任务 3; constraint start no earlier than 2004-05-26 → finish no earlier than 2004-06-25; resources QA [50%] → 需求人员 |
| 179 | 编码阶段度量数据收集 | 2004-06-02 A → 2004-07-05 (+33d) | 2004-06-02 A → 2004-07-09 (+37d) | 1d → 5d | 100% → 0% | none → 24.96d | none → 81 | was named QA项目支持任务 4; constraint start no earlier than 2004-06-02 → finish no earlier than 2004-07-09; resources QA [50%] → 项目经理 |
| 180 | 编码里程碑报告 | 2004-06-09 A → 2004-07-09 (+30d) | 2004-06-09 A → 2004-07-13 (+34d) | 1d → 2d | 100% → 0% | none → 23.08d | none → 82 | was named QA项目支持任务 5; constraint start no earlier than 2004-06-09 → finish no earlier than 2004-07-12; resources QA [50%] → 项目经理 |
| 181 | 测试阶段任务 | 2004-06-16 A → 2004-07-13 (+27d) | 2004-06-16 A → 2004-08-12 (+57d) | 1d → 23d | 100% → 0% | none → 0.96d |  | was named QA项目支持任务 6; constraint start no earlier than 2004-06-16 → finish no earlier than 2004-08-12; resources QA [50%] → none |
| 182 | 集成测试培训 | 2004-06-23 A → 2004-07-13 (+20d) | 2004-06-23 A → 2004-07-15 (+22d) | 1d → 2d | 100% → 0% | none → 21.16d | none → 79 | was named QA项目支持任务 7; constraint start no earlier than 2004-06-23 → finish no earlier than 2004-07-14; resources QA [50%] → 测试负责人 |
| 183 | 集成测试任务 | 2004-06-30 A → 2004-07-14 (+14d) | 2004-06-30 A → 2004-07-26 (+26d) | 1d → 8d | 100% → 0% | none → 14.16d | none → 85 | was named QA项目支持任务 8; constraint start no earlier than 2004-06-30 → finish no earlier than 2004-07-23; resources QA [50%] → 测试人员 |
| 184 | 集成测试报告编写 | 2004-07-07 A → 2004-07-23 (+16d) | 2004-07-07 A → 2004-07-27 (+20d) | 1d → 2d | 100% → 0% | none → 13.91d | none → 86 | was named QA项目支持任务 9; constraint start no earlier than 2004-07-07 → finish no earlier than 2004-07-26; resources QA [50%] → 测试人员 |
| 185 | 集成测试编码返工 | 2004-07-14 A → 2004-07-23 (+9d) | 2004-07-14 A → 2004-07-27 (+13d) | 1d → 2d | 100% → 0% | none → 13.91d | none → 86 | was named QA项目支持任务 10; constraint start no earlier than 2004-07-14 → finish no earlier than 2004-07-26; resources QA [50%] → 编码人员 |
| 186 | 系统测试培训 | 2004-07-21 A → 2004-07-26 (+5d) | 2004-07-21 A → 2004-07-28 (+7d) | 1d → 2d | 100% → 0% | none → 12.91d | none → 88 | was named QA项目支持任务 11; constraint start no earlier than 2004-07-21 → finish no earlier than 2004-07-27; resources QA [50%] → 测试负责人 |
| 187 | **系统测试任务** | 2004-05-10 A → 2004-07-27 (+78d) | 2004-08-12 A → 2004-08-03 (-9d) | 69d? → 6d | 100% → 0% |  | none → 89 | was named 配置管理任务; resources none → 测试人员 |
| 188 | 系统测试报告编写 | 2004-05-12 A → 2004-08-03 (+83d) | 2004-05-12 A → 2004-08-05 (+85d) | 1d? → 2d? | 100% → 0% | none → 6.91d | 158 → 90 | was named 配置管理活动培训; constraint none → finish no earlier than 2004-08-04; resources CM [50%] → 测试人员 |
| 189 | 系统测试编码返工 | 2004-05-10 A → 2004-08-04 (+86d) | 2004-05-10 A → 2004-08-06 (+88d) | 1d? → 2d? | 100% → 0% | none → 5.66d | none → 91 | was named 配置库建立; constraint none → finish no earlier than 2004-08-05; resources CM [50%] → 测试人员 |
| 190 | **测试阶段需求功能矩阵跟踪** | 2004-05-13 A → 2004-08-05 (+84d) | 2004-07-15 A → 2004-08-06 (+22d) | 46d → 2d | 100% → 0% |  | none → 92 | was named 配置项状态记录和发布; resources none → 需求人员 |
| 191 | 测试阶段度量数据收集 | 2004-05-13 A → 2004-08-06 (+85d) | 2004-05-13 A → 2004-08-10 (+89d) | 1d → 2d | 100% → 0% | none → 3.66d | none → 93 | was named 配置项状态记录和发布 1; constraint start no earlier than 2004-05-13 → finish no earlier than 2004-08-09; resources CM [12.5%] → 项目经理 |
| 192 | 测试里程碑报告 | 2004-05-20 A → 2004-08-09 (+81d) | 2004-05-20 A → 2004-08-11 (+83d) | 1d → 2d | 100% → 0% | none → 2.66d | none → 94 | was named 配置项状态记录和发布 2; constraint start no earlier than 2004-05-20 → finish no earlier than 2004-08-10; resources CM [13%] → 项目经理 |
| 193 | 用户体验 | 2004-05-27 A → 2004-08-10 (+75d) | 2004-05-27 A → 2004-08-12 (+77d) | 1d → 2d | 100% → 0% | none → 1.66d | none → 95 | was named 配置项状态记录和发布 3; constraint start no earlier than 2004-05-27 → finish no earlier than 2004-08-11; resources CM [13%] → none |
| 194 | 研发体验 | 2004-06-03 A → 2004-08-11 (+69d) | 2004-06-03 A → 2004-08-13 (+71d) | 1d → 2d | 100% → 0% | none → 0.66d | none → 96 | was named 配置项状态记录和发布 4; constraint start no earlier than 2004-06-03 → finish no earlier than 2004-08-12; resources CM [13%] → none |
| 195 | 配置项状态记录和发布 5 | 2004-06-10 A → 2004-06-10 | 2004-06-10 A → 2004-06-10 | 1d → 0.96d | 100% → 0% | none → 46d |  |  |
| 196 | 配置项状态记录和发布 6 | 2004-06-17 A → 2004-06-17 | 2004-06-17 A → 2004-06-17 | 1d → 0.96d | 100% → 0% | none → 41d |  |  |
| 197 | 配置项状态记录和发布 7 | 2004-06-24 A → 2004-06-24 | 2004-06-24 A → 2004-06-24 | 1d → 0.96d | 100% → 0% | none → 36d |  |  |
| 198 | 配置项状态记录和发布 8 | 2004-07-01 A → 2004-07-01 | 2004-07-01 A → 2004-07-01 | 1d → 0.96d | 100% → 0% | none → 31d |  |  |
| 199 | 配置项状态记录和发布 9 | 2004-07-08 A → 2004-07-08 | 2004-07-08 A → 2004-07-08 | 1d → 0.96d | 100% → 0% | none → 26d |  |  |
| 200 | 配置项状态记录和发布 10 | 2004-07-15 A → 2004-07-15 | 2004-07-15 A → 2004-07-15 | 1d → 0.96d | 100% → 0% | none → 21d |  |  |
| 201 | 配置物理审计 | 2004-06-18 A → 2004-07-27 (+39d) | 2004-06-18 A → 2004-07-27 (+39d) |  | 100% → 0% | none → -7d |  |  |
| 202 | 配置功能审计 | 2004-06-18 A → 2004-07-27 (+39d) | 2004-06-18 A → 2004-07-27 (+39d) |  | 100% → 0% | none → -7d |  |  |
| 203 | 配置审计问题跟踪 | 2004-06-24 A → 2004-08-02 (+39d) | 2004-07-07 A → 2004-08-13 (+37d) | 1.04d? → 1d? | 100% → 0% | none → -7.96d |  |  |
| 204 | **配置变更控制** | 2004-05-13 A → 2004-07-27 (+75d) | 2004-07-22 A → 2004-07-27 (+5d) | 51d → 1d | 100% → 0% | none → 5d |  |  |
| 205 | 配置变更控制 1 | 2004-05-13 A → 2004-07-27 (+75d) | 2004-05-13 A → 2004-07-27 (+75d) |  | 100% → 0% | none → 5d |  |  |
| 206 | 配置变更控制 2 | 2004-05-20 A → 2004-07-27 (+68d) | 2004-05-20 A → 2004-07-27 (+68d) |  | 100% → 0% | none → 5d |  |  |
| 207 | 配置变更控制 3 | 2004-05-27 A → 2004-07-27 (+61d) | 2004-05-27 A → 2004-07-27 (+61d) |  | 100% → 0% | none → 5d |  |  |
| 208 | 配置变更控制 4 | 2004-06-03 A → 2004-07-27 (+54d) | 2004-06-03 A → 2004-07-27 (+54d) |  | 100% → 0% | none → 5d |  |  |
| 209 | 配置变更控制 5 | 2004-06-10 A → 2004-07-27 (+47d) | 2004-06-10 A → 2004-07-27 (+47d) |  | 100% → 0% | none → 5d |  |  |
| 210 | 配置变更控制 6 | 2004-06-17 A → 2004-07-27 (+40d) | 2004-06-17 A → 2004-07-27 (+40d) |  | 100% → 0% | none → 5d |  |  |
| 211 | 配置变更控制 7 | 2004-06-24 A → 2004-07-27 (+33d) | 2004-06-24 A → 2004-07-27 (+33d) |  | 100% → 0% | none → 5d |  |  |
| 212 | 配置变更控制 8 | 2004-07-01 A → 2004-07-27 (+26d) | 2004-07-01 A → 2004-07-27 (+26d) |  | 100% → 0% | none → 5d |  |  |
| 213 | 配置变更控制 9 | 2004-07-08 A → 2004-07-27 (+19d) | 2004-07-08 A → 2004-07-27 (+19d) |  | 100% → 0% | none → 5d |  |  |

| ID | Task | Start | Finish | Duration | Complete | Total float |
| --- | --- | --- | --- | --- | --- | --- |
| 214 | 配置变更控制 10 | 2004-07-15 A → 2004-07-27 (+12d) | 2004-07-15 A → 2004-07-27 (+12d) |  | 100% → 0% | none → 5d |
| 215 | 配置变更控制 11 | 2004-07-22 A → 2004-07-27 (+5d) | 2004-07-22 A → 2004-07-27 (+5d) |  | 100% → 0% | none → 5d |
| 216 | 产品构造及发布1 | 2004-06-28 A → 2004-07-27 (+29d) | 2004-06-29 A → 2004-07-28 (+29d) |  | 100% → 0% | none → 4d |
| 217 | 产品构造及发布2 | 2004-07-28 A → 2004-07-27 (-1d) | 2004-07-29 A → 2004-07-28 (-1d) |  | 100% → 0% | none → 4d |
| 218 | 产品构造及发布3 | 2004-08-09 A → 2004-08-05 (-4d) | 2004-08-12 A → 2004-08-11 (-1d) |  | 100% → 0% | none → -5.3d |
| 219 | **配置库备份** | 2004-05-14 A → 2004-07-27 (+74d) | 2004-07-23 A → 2004-07-27 (+4d) | 51d → 1d | 100% → 0% | none → 5d |
| 220 | 配置库备份 1 | 2004-05-14 A → 2004-07-27 (+74d) | 2004-05-14 A → 2004-07-27 (+74d) |  | 100% → 0% | none → 5d |
| 221 | 配置库备份 2 | 2004-05-21 A → 2004-07-27 (+67d) | 2004-05-21 A → 2004-07-27 (+67d) | 1d → 0.96d | 100% → 0% | none → 5.04d |
| 222 | 配置库备份 3 | 2004-05-28 A → 2004-07-27 (+60d) | 2004-05-28 A → 2004-07-27 (+60d) | 1d → 0.96d | 100% → 0% | none → 5.04d |
| 223 | 配置库备份 4 | 2004-06-04 A → 2004-07-27 (+53d) | 2004-06-04 A → 2004-07-27 (+53d) | 1d → 0.96d | 100% → 0% | none → 5.04d |
| 224 | 配置库备份 5 | 2004-06-11 A → 2004-07-27 (+46d) | 2004-06-11 A → 2004-07-27 (+46d) | 1d → 0.96d | 100% → 0% | none → 5.04d |
| 225 | 配置库备份 6 | 2004-06-18 A → 2004-07-27 (+39d) | 2004-06-18 A → 2004-07-27 (+39d) | 1d → 0.96d | 100% → 0% | none → 5.04d |
| 226 | 配置库备份 7 | 2004-06-25 A → 2004-07-27 (+32d) | 2004-06-25 A → 2004-07-27 (+32d) | 1d → 0.96d | 100% → 0% | none → 5.04d |
| 227 | 配置库备份 8 | 2004-07-02 A → 2004-07-27 (+25d) | 2004-07-02 A → 2004-07-27 (+25d) | 1d → 0.96d | 100% → 0% | none → 5.04d |
| 228 | 配置库备份 9 | 2004-07-09 A → 2004-07-27 (+18d) | 2004-07-09 A → 2004-07-27 (+18d) | 1d → 0.96d | 100% → 0% | none → 5.04d |
| 229 | 配置库备份 10 | 2004-07-16 A → 2004-07-27 (+11d) | 2004-07-16 A → 2004-07-27 (+11d) | 1d → 0.96d | 100% → 0% | none → 5.04d |
| 230 | 配置库备份 11 | 2004-07-23 A → 2004-07-27 (+4d) | 2004-07-23 A → 2004-07-27 (+4d) | 1d → 0.96d | 100% → 0% | none → 5.04d |
